# RTx_schedule_updated

Schedule from MS Project, 2014-01-15 to 2014-05-24, A marks actual dates.
Lattice Semiconductor

## Calendars

- Standard: Mon-Sun 08:00-12:00, 13:00-17:00.

## Resources

| Resource |
| --- |
| Robert |
| Rob |
| Robin |

## Schedule

| ID | WBS | Task | Type | Duration | Start | Finish | Predecessors | Complete | Remaining | Total slack | Resources | Work | Actual work |
| --- | --- | --- | --- | --- | --- | --- | --- | --- | --- | --- | --- | --- | --- |
| 1 | 1 | **RTx Controller** |  | 130d | 2014-01-15 A | 2014-05-24 |  | 55% | 58.5d | 0d |  | 1476h | 786h |
| 2 | 1.1 | **RTx Controller Hardware** |  | 122d | 2014-01-15 A | 2014-05-16 |  | 74% | 31.32d | 0d |  | 620h | 459h |
| 3 | 1.1.1 | **Schematic** |  | 84d | 2014-01-15 A | 2014-04-08 |  | 89% | 9.47d | 0d |  | 424h | 378h |
| 4 | 1.1.1.1 | Verify processor selection | manual | 6d | 2014-01-15 A | 2014-01-20 A |  | 100% |  |  | Robert | 48h | 48h |
| 5 | 1.1.1.2 | Review and document ADC filter design | manual | 5d | 2014-01-26 A | 2014-01-30 A |  | 100% |  |  | Rob | 40h | 40h |
| 6 | 1.1.1.3 | Implement Ethernet port in HW | manual | 14d | 2014-01-26 A | 2014-02-08 A | 4 | 100% |  |  | Robert | 112h | 112h |
| 7 | 1.1.1.4 | Implement USB port in HW | manual | 3d | 2014-02-06 A | 2014-02-08 A | 4 | 100% |  |  | Robin | 24h | 24h |
| 8 | 1.1.1.5 | Determine PCB power requirements and design power supplies | manual | 6d | 2014-02-13 A | 2014-02-18 A | 4, 6, 7 | 100% |  |  | Robert | 48h | 48h |
| 9 | 1.1.1.6 | Select connectors and cabling | manual | 4d | 2014-04-05 | 2014-04-08 | 6, 7 |  |  |  | Rob | 32h |  |
| 10 | 1.1.1.7 | Finalize processor pin-out | manual | 6d | 2014-02-17 A | 2014-02-22 A | 6, 7 | 100% |  |  | Robert; Rob | 64h | 64h |
| 11 | 1.1.1.8 | FMEA of RTx Controller Board/Revise Schematic | manual | 7d | 2014-03-03 A | 2014-03-09 | 4, 6, 7, 9, 10 | 75% | 1.75d |  | Robin | 56h | 42h |
| 12 | 1.1.2 | **PCB** |  | 68d | 2014-03-10 A | 2014-05-16 | 3 | 42% | 39.17d | 0d |  | 196h | 81h |
| 13 | 1.1.2.1 | **Layout PCB** |  | 29d | 2014-03-10 A | 2014-04-07 | 3 | 61% | 11.33d | 0d |  | 140h | 81h |
| 14 | 1.1.2.1.1 | General Layout of RTx Controller PCB | manual | 12d | 2014-03-10 A | 2014-04-07 | 3, 84, 15 | 81% | 2.25d |  | Robin; Rob [50%] | 108h | 81h |
| 15 | 1.1.2.1.2 | High-speed Signal Routing (including research) | manual | 4d | 2014-04-04 | 2014-04-07 | 3 |  |  |  | Robert | 32h |  |
| 16 | 1.1.2.2 | Assemble RTx Controller PCB | manual | 7d | 2014-05-10 | 2014-05-16 | 14, 15 |  |  |  | Robin | 56h |  |
| 17 | 1.2 | **RTx Controller Firmware** |  | 108d | 2014-02-06 A | 2014-05-24 |  | 43% | 61.36d | 0d |  | 856h | 327h |
| 18 | 1.2.1 | **Develop Axis Position Control Loop** |  | 28d | 2014-02-06 A | 2014-03-05 |  | 77% | 6.42d | 0d |  | 192h | 148h |
| 19 | 1.2.1.1 | Research Control Theory | manual | 11d | 2014-02-06 A | 2014-02-16 A |  | 100% |  |  | Rob | 88h | 88h |
| 20 | 1.2.1.2 | Model control transfer function and derive PID coefficients | manual | 4d | 2014-02-21 A | 2014-02-24 | 19 | 75% | 1d |  | Rob | 32h | 24h |
| 21 | 1.2.1.3 | Develop code for PID loop | manual | 9d | 2014-02-25 A | 2014-03-05 | 20 | 50% | 4.5d |  | Rob | 72h | 36h |
| 22 | 1.2.2 | **Develop Ethernet API** |  | 54d | 2014-03-06 A | 2014-04-28 |  | 47% | 28.52d | 0d |  | 384h | 143h |
| 23 | 1.2.2.1 | Research ChibiOS/RT UDP implementation | manual | 7d | 2014-03-06 A | 2014-03-12 A |  | 100% |  |  | Rob [50%] | 28h | 28h |
| 24 | 1.2.2.2 | Write General Ethernet API | manual | 21d | 2014-03-13 A | 2014-04-02 | 23 | 75% | 5.25d |  | Rob [50%] | 84h | 63h |
| 25 | 1.2.2.3 | Determine required Sightline functionalities | manual | 13d | 2014-03-19 A | 2014-03-31 | 28 | 50% | 6.5d |  | Robert | 104h | 52h |
| 26 | 1.2.2.4 | Write Ethernet API Code for Sightline | manual | 21d | 2014-04-08 | 2014-04-28 | 25 |  |  |  | Robert | 168h |  |

| ID | WBS | Task | Type | Duration | Start | Finish | Predecessors | Complete | Remaining | Total slack | Constraint | Resources | Work | Actual work |
| --- | --- | --- | --- | --- | --- | --- | --- | --- | --- | --- | --- | --- | --- | --- |
| 27 | 1.2.3 | **Develop tracking algorithm** |  | 79d | 2014-03-07 A | 2014-05-24 |  | 13% | 68.84d | 0d |  |  | 280h | 36h |
| 28 | 1.2.3.1 | Research capabilities of Sightline SLA1500 | manual | 6d | 2014-03-07 A | 2014-03-12 |  | 75% | 1.5d |  |  | Robert | 48h | 36h |
| 29 | 1.2.3.2 | Research capabilities of available imaging devices | manual | 7d | 2014-05-03 | 2014-05-09 | 28 |  |  |  |  | Robin | 56h |  |
| 30 | 1.2.3.3 | Develop tracking algorithm | manual | 11d | 2014-05-03 | 2014-05-13 | 29 |  |  |  |  | Rob | 88h |  |
| 31 | 1.2.3.4 | Write tracking code | manual | 11d | 2014-05-14 | 2014-05-24 | 30, 10 |  |  |  |  | Rob | 88h |  |
| 32 | 2 | **Battery Unit** |  | 8d | 2014-02-27 A | 2014-03-06 A |  | 100% |  |  |  |  | 64h | 64h |
| 33 | 2.1 | Determine system power requirements | manual | 4d | 2014-02-27 A | 2014-03-02 A | 8 | 100% |  |  |  | Robert | 32h | 32h |
| 34 | 2.2 | Design battery switch/precharge and cabling | manual | 4d | 2014-03-03 A | 2014-03-06 A | 33 | 100% |  |  |  | Robert | 32h | 32h |
| 35 | 3 | **Manual Control Unit** |  | 92d | 2014-01-31 A | 2014-05-02 |  | 28% | 66.7d | 0d |  |  | 320h | 88h |
| 36 | 3.1 | **Hardware** |  | 92d | 2014-01-31 A | 2014-05-02 |  | 69% | 28.75d | 0d |  |  | 128h | 88h |
| 37 | 3.1.1 | Design ADC filters for the manual inputs | manual | 6d | 2014-01-31 A | 2014-02-05 A |  | 100% |  |  |  | Rob | 48h | 48h |
| 38 | 3.1.2 | Complete enclosure of manual controller | manual | 3d | 2014-04-30 | 2014-05-02 | 37, 40 |  |  |  |  | Robin | 24h |  |
| 39 | 3.1.3 | FMEA of RTx Manual Remote Board/Revise Schematic | manual | 2d | 2014-02-09 A | 2014-02-10 A | 37 | 100% |  |  |  | Robin | 16h | 16h |
| 40 | 3.1.4 | PCB Layout | manual | 3d | 2014-02-11 A | 2014-02-13 A | 37, 39 | 100% |  |  |  | Robin | 24h | 24h |
| 41 | 3.1.5 | Assemble Manual Remote PCB | manual | 2d | 2014-04-29 | 2014-04-30 | 37, 39, 40 |  |  |  |  | Robert | 16h |  |
| 42 | 3.2 | **Software** |  | 24d | 2014-04-09 | 2014-05-02 |  |  |  | 0d |  |  | 192h |  |
| 43 | 3.2.1 | Develop manual control algorithm | manual | 14d | 2014-04-09 | 2014-04-22 | 37 |  |  |  |  | Rob | 112h |  |
| 44 | 3.2.2 | Write code for Manual Control | manual | 10d | 2014-04-23 | 2014-05-02 | 43 |  |  |  |  | Rob | 80h |  |
| 45 | 4 | **FMEA of Mechanical Structure** |  | 21d | 2014-04-09 | 2014-04-29 | 3, 35, 32 |  |  | 0d |  |  | 168h |  |
| 46 | 4.1 | Determine all single points of failure and determine which ones could result in injury or permanent damage | manual | 7d | 2014-04-09 | 2014-04-15 |  |  |  |  | start no earlier than 2014-03-25 | Robin | 56h |  |
| 47 | 4.2 | Determine methods of prevention/Revisions/Design | manual | 14d | 2014-04-16 | 2014-04-29 | 46 |  |  |  | start no earlier than 2014-03-20 | Robin | 112h |  |
| 48 | 5 | **Design the power filter for the axis motors** |  | 76d | 2014-02-17 A | 2014-05-03 |  | 73% | 20.73d | 0d |  |  | 88h | 64h |
| 49 | 5.1 | Power Filter Schematic | manual | 4d | 2014-02-17 A | 2014-02-20 A |  | 100% |  |  |  | Robin | 32h | 32h |
| 50 | 5.2 | Power Filter PCB layout | manual | 4d | 2014-02-21 A | 2014-02-24 A | 49 | 100% |  |  |  | Robin | 32h | 32h |
| 51 | 5.3 | Assemble Power Filter PCB | manual | 3d | 2014-05-01 | 2014-05-03 | 49, 50 |  |  |  |  | Robert | 24h |  |
| 52 | 6 | Select Ethernet switch | manual | 5d | 2014-01-21 A | 2014-01-25 A |  | 100% |  |  |  | Robert | 40h | 40h |

| ID | WBS | Task | Type | Duration | Start | Finish | Predecessors |
| --- | --- | --- | --- | --- | --- | --- | --- |
| 53 | 7 | **Testing** |  | 40d? | 2014-01-26 | 2014-03-06 | 1 |
| 54 | 7.1 | **RTx controller** |  | 1d | 2014-01-26 | 2014-01-26 |  |
| 55 | 7.1.1 | **Hardware** |  | 1d | 2014-01-26 | 2014-01-26 |  |
| 56 | 7.1.1.1 | Test development (Robert/Robin – 2 hours) | manual | 1.5d | 2014-01-26 | 2014-01-27 |  |
| 57 | 7.1.1.2 | Test execution and debugging (Robert/Robin – 3 hours) | manual | 2d | 2014-01-26 | 2014-01-27 | 56 |
| 58 | 7.1.1.3 | Revision (Robert /Robin– 3 hours) | manual | 2d | 2014-01-26 | 2014-01-27 | 57 |
| 59 | 7.1.2 | **Firmware** |  | 1d | 2014-01-26 | 2014-01-26 |  |
| 60 | 7.1.2.1 | Test development (Rob – 32 hours) | manual | 22d | 2014-01-26 | 2014-02-16 |  |
| 61 | 7.1.2.2 | Test execution and debugging (Rob – 32 hours) | manual | 22d | 2014-01-26 | 2014-02-16 | 60 |
| 62 | 7.1.2.3 | Revision (Rob – 16 hours) | manual | 11d | 2014-01-26 | 2014-02-05 | 61 |
| 63 | 7.1.3 | **Integration** |  | 1d | 2014-01-26 | 2014-01-26 |  |
| 64 | 7.1.3.1 | Test development (All members – 8 hours) | manual | 6d | 2014-01-26 | 2014-01-31 |  |
| 65 | 7.1.3.2 | Test execution and debugging (All members – 6 hours) | manual | 4d | 2014-01-26 | 2014-01-29 | 64 |
| 66 | 7.1.3.3 | Revision (All members - 6 hours) | manual | 4d | 2014-01-26 | 2014-01-29 | 65 |
| 67 | 7.2 | **Manual controller** |  | 1d | 2014-01-26 | 2014-01-26 |  |
| 68 | 7.2.1 | **Hardware** |  | 1d | 2014-01-26 | 2014-01-26 |  |
| 69 | 7.2.1.1 | Test development (Robert/Robin – 1 hour) | manual | 1d | 2014-01-26 | 2014-01-26 |  |
| 70 | 7.2.1.2 | Test execution and debugging (Robert/Robin – 1 hour) | manual | 1d | 2014-01-26 | 2014-01-26 | 69 |
| 71 | 7.2.1.3 | Revision (Robert/Robin – 1 hour) | manual | 1d | 2014-01-26 | 2014-01-26 | 70 |
| 72 | 7.2.2 | **Firmware** |  | 1d | 2014-01-26 | 2014-01-26 |  |
| 73 | 7.2.2.1 | Test development (Rob – 8 hours) | manual | 6d | 2014-01-26 | 2014-01-31 |  |
| 74 | 7.2.2.2 | Test execution and debugging (Rob – 8 hours) | manual | 6d | 2014-01-26 | 2014-01-31 | 73 |
| 75 | 7.2.2.3 | Revision (Rob – 4 hours) | manual | 3d | 2014-01-26 | 2014-01-28 | 74 |
| 76 | 7.2.3 | **Integration** |  | 1d | 2014-01-26 | 2014-01-26 |  |
| 77 | 7.2.3.1 | Test development (All members – 1 hour) | manual | 1d | 2014-01-26 | 2014-01-26 |  |
| 78 | 7.2.3.2 | Test execution and debugging (All members – 1 hour) | manual | 1d | 2014-01-26 | 2014-01-26 | 77 |
| 79 | 7.2.3.3 | Revision (All members – 1 hour) | manual | 1d | 2014-01-26 | 2014-01-26 | 78 |

| ID | WBS | Task | Type | Duration | Start | Finish | Predecessors | Complete | Resources | Work | Actual work |
| --- | --- | --- | --- | --- | --- | --- | --- | --- | --- | --- | --- |
| 80 | 7.3 | **System integration** |  | 1d | 2014-01-26 | 2014-01-26 |  |  |  |  |  |
| 81 | 7.3.1 | Test development (All members – 4 hours) | manual | 3d | 2014-01-26 | 2014-01-28 |  |  |  |  |  |
| 82 | 7.3.2 | Test execution and debugging (All members – 4 hours) | manual | 3d | 2014-01-26 | 2014-01-28 | 81 |  |  |  |  |
| 83 | 7.3.3 | Revision (All members – 16 hours) | manual | 11d | 2014-01-26 | 2014-02-05 | 82 |  |  |  |  |
| 84 | 8 | **Enclosure** |  | 6d | 2014-02-25 A | 2014-03-02 A |  | 100% |  | 48h | 48h |
| 85 | 8.1 | Select enclosure and determine PCB size and shape | manual | 6d | 2014-02-25 A | 2014-03-02 A |  | 100% | Robin | 48h | 48h |
| 86 | 9 | **Project Management** |  | 5d | 2014-01-26 A | 2014-01-30 A |  | 100% |  | 40h | 40h |
| 87 | 9.1 | Complete project proposal documentation | manual | 1d | 2014-01-26 A | 2014-01-26 A |  | 100% | Robin | 8h | 8h |
| 88 | 9.2 | Finish scheduling tasks up to testing | manual | 3d | 2014-01-28 A | 2014-01-30 A |  | 100% | Robin | 24h | 24h |
| 89 | 9.3 | Write project description for Jeske | manual | 1d | 2014-01-27 A | 2014-01-27 A |  | 100% | Robin | 8h | 8h |
